# FFL v0.1

Schedule from MS Project, 2017-12-11 to 2018-02-23, A marks actual dates.

## Calendars

- Standard: Mon-Fri 08:00-12:00, 13:00-17:00; Sat-Sun off.

## Schedule

| ID | WBS | Task | Type | Duration | Start | Finish | Predecessors | Complete | Remaining | Actual start | Actual finish | Total slack | Constraint | Help Needed |
| --- | --- | --- | --- | --- | --- | --- | --- | --- | --- | --- | --- | --- | --- | --- |
| 1 | 1 | **Project Setup** |  | 29d | 2018-01-02 08:00 | 2018-02-09 17:00 |  | 90% | 3d | 2017-12-11 08:00 |  |  |  |  |
| 2 | 1.1 | Gain Access to FLL Server |  | 1d | 2017-12-11 08:00 A | 2017-12-11 17:00 A |  | 100% |  |  |  |  | start no earlier than 2017-12-11 08:00 |  |
| 3 | 1.2 | Order DreamWeaver |  | 1d | 2017-12-12 08:00 A | 2017-12-12 17:00 A |  | 100% |  |  |  |  | start no earlier than 2017-12-12 08:00 |  |
| 4 | 1.3 | Define Project scope with Eric/Gayann |  | 5d | 2017-12-11 08:00 A | 2017-12-15 17:00 A |  | 100% |  |  |  |  | finish no earlier than 2017-12-15 17:00 |  |
| 5 | 1.4 | Develop Project Plan/Timeline with deliverable schedule |  | 2d | 2018-01-15 08:00 A | 2018-01-16 17:00 A |  | 100% |  |  |  |  | finish no earlier than 2018-01-16 17:00 |  |
| 6 | 1.5 | Talk to leading developer on project background |  | 3d | 2017-12-18 08:00 A | 2017-12-20 17:00 A |  | 100% |  |  |  |  | finish no earlier than 2017-12-15 17:00 |  |
| 7 | 1.6 | Familiarize/locate all data files needed - what's missing? |  | 5d | 2017-12-18 08:00 A | 2017-12-22 17:00 A |  | 100% |  |  |  |  | finish no earlier than 2017-12-22 17:00 |  |
| 8 | 1.7 | Scrub Excel FLL content/categories/URLS |  | 7d | 2018-01-02 08:00 A | 2018-01-10 17:00 A |  | 100% |  |  |  |  | finish no earlier than 2018-01-10 17:00 |  |
| 9 | 1.8 | **Create Operating rhythm weekly meetings** |  | 1d? | 2018-01-12 08:00 | 2018-01-12 17:00 |  | 100% |  | 2018-01-17 08:00 | 2018-01-17 17:00 |  |  |  |
| 10 | 1.8.1 | Send reoccuring weekly tag in to Eric/Gayann |  | 1d | 2018-01-17 08:00 A | 2018-01-17 17:00 A |  | 100% |  |  |  |  | start no earlier than 2018-01-17 08:00 |  |
| 11 | 1.9 | Source 'Manager' Pilot user group |  | 4d | 2018-01-16 08:00 A | 2018-01-19 17:00 |  | 25% | 3d |  |  | 25d | finish no earlier than 2018-01-19 17:00 |  |
| 12 | 2 | **Design** |  | 15d | 2018-01-08 08:00 A | 2018-01-26 17:00 |  | 26% | 11.05d |  |  | 20d |  |  |
| 13 | 2.1 | Define/Consolidate Homepage categories |  | 2d | 2018-01-08 08:00 A | 2018-01-09 17:00 A |  | 100% |  |  |  |  | finish no earlier than 2018-01-09 17:00 |  |
| 14 | 2.2 | Eric Front Page Buyoff | milestone | 0d | 2018-01-18 08:00 A | 2018-01-18 08:00 A |  | 100% |  |  |  |  | start no earlier than 2018-01-18 08:00 |  |
| 15 | 2.3 | Incorporate Eric Feedback |  | 1d | 2018-01-18 08:00 A | 2018-01-18 17:00 A | 14 | 100% |  |  |  |  |  |  |
| 16 | 2.4 | **Validate Level-2 page links (all working?)** |  | 7d | 2018-01-18 08:00 | 2018-01-26 17:00 |  |  |  |  |  | 20d |  |  |
| 17 | 2.4.1 | Validate Content |  | 7d | 2018-01-18 08:00 | 2018-01-26 17:00 |  |  |  |  |  | 20d | finish no earlier than 2018-01-26 17:00 |  |
| 18 | 2.4.2 | Validate URL's |  | 7d | 2018-01-18 08:00 | 2018-01-26 17:00 |  |  |  |  |  | 20d | finish no earlier than 2018-01-26 17:00 |  |
| 19 | 2.5 | Create Level-2 Design |  | 1d | 2018-01-17 08:00 A | 2018-01-17 17:00 A |  | 100% |  |  |  |  | start no earlier than 2018-01-17 08:00 |  |
| 20 | 2.6 | Duplicate prototype CSS design on 'second-click' template |  | 1d | 2018-01-18 08:00 A | 2018-01-18 17:00 A | 19 | 100% |  |  |  |  | finish no earlier than 2018-01-17 17:00 |  |
| 21 | 3 | **Development** |  | 1d | 2018-01-14 08:00 | 2018-01-14 17:00 |  | 60% | 0.4d | 2018-01-17 08:00 |  |  |  |  |
| 22 | 3.1 | SEO - Total Access w/ IT |  | 5d | 2018-01-22 08:00 | 2018-01-26 17:00 |  |  |  |  |  | 20d | finish no earlier than 2018-01-26 17:00 | Help Needed |
| 23 | 3.2 | Intranet Site-search integration in FLL website |  | 5d | 2018-01-24 08:00 | 2018-01-30 17:00 | 25 |  |  |  |  | 18d | finish no earlier than 2018-01-26 17:00 | Help Needed |
| 24 | 3.3 | Web-analytics Platform integration |  | 10d | 2018-01-29 08:00 | 2018-02-09 17:00 |  |  |  |  |  | 10d | finish no earlier than 2018-02-09 17:00 |  |

| ID | WBS | Task | Duration | Start | Finish | Predecessors | Complete | Remaining | Total slack | Constraint |
| --- | --- | --- | --- | --- | --- | --- | --- | --- | --- | --- |
| 25 | 3.4 | **Level-1 Dev** | 5d | 2018-01-17 08:00 A | 2018-01-23 17:00 |  | 96% | 0.22d |  |  |
| 26 | 3.4.1 | Source logos for buttons | 5d | 2018-01-17 08:00 A | 2018-01-23 17:00 A |  | 100% |  |  | start no earlier than 2018-01-17 08:00 |
| 27 | 3.4.2 | Add logos to buttons | 5d | 2018-01-17 08:00 A | 2018-01-23 17:00 A |  | 100% |  |  | start no earlier than 2018-01-17 08:00 |
| 28 | 3.4.3 | Align font sizes on Buttons | 5d | 2018-01-17 08:00 A | 2018-01-23 17:00 A |  | 100% |  |  | start no earlier than 2018-01-17 08:00 |
| 29 | 3.4.4 | Leadership Compass - increase text size on image | 5d | 2018-01-17 08:00 A | 2018-01-23 17:00 A |  | 100% |  |  | start no earlier than 2018-01-17 08:00 |
| 30 | 3.4.5 | Create summary text for each button | 5d | 2018-01-17 08:00 A | 2018-01-23 17:00 A |  | 100% |  |  |  |
| 31 | 3.4.6 | Remove additional Drop-down menus | 5d | 2018-01-17 08:00 A | 2018-01-23 17:00 A |  | 100% |  |  |  |
| 32 | 3.4.7 | Add Level-2 Drop-down menu bar items | 5d | 2018-01-17 08:00 A | 2018-01-23 17:00 A |  | 100% |  |  |  |
| 33 | 3.4.8 | Update Home-page META tags / Title | 5d | 2018-01-17 08:00 A | 2018-01-23 17:00 A |  | 100% |  |  |  |
| 34 | 3.4.9 | Mobile: validate mobile design | 1d? | 2018-01-17 08:00 A | 2018-01-17 17:00 A |  | 100% |  |  |  |
| 35 | 3.4.10 | Button Rework: Round-1 | 2d | 2018-01-19 08:00 A | 2018-01-22 17:00 A |  | 100% |  |  | finish no earlier than 2018-01-22 17:00 |
| 36 | 3.4.11 | Button Rework: Round-2 | 2d | 2018-01-25 08:00 | 2018-01-26 17:00 |  |  |  | 20d | finish no earlier than 2018-01-26 17:00 |
| 37 | 3.5 | **Level-2 Dev** | 1d? | 2018-01-18 08:00 A | 2018-01-18 17:00 |  | 78% | 0.22d? |  |  |
| 38 | 3.5.1 | Boeing Production Systems | 1d | 2018-01-18 08:00 A | 2018-01-18 17:00 A |  | 100% |  |  |  |
| 39 | 3.5.2 | Develop Yourself | 0.5d | 2018-01-19 08:00 A | 2018-01-19 12:00 A | 38 | 100% |  |  |  |
| 40 | 3.5.3 | Develop Your Team | 0.5d | 2018-01-19 13:00 A | 2018-01-19 17:00 A | 39 | 100% |  |  |  |
| 41 | 3.5.4 | FOD | 0.5d | 2018-01-22 08:00 A | 2018-01-22 12:00 A | 40 | 100% |  |  |  |
| 42 | 3.5.5 | Go4Zero | 0.5d | 2018-01-22 13:00 A | 2018-01-22 17:00 A | 41 | 100% |  |  |  |
| 43 | 3.5.6 | Drawings Specs & Procedures | 0.5d | 2018-01-23 08:00 A | 2018-01-23 12:00 A | 42 | 100% |  |  | start no earlier than 2018-01-19 08:00 |
| 44 | 3.5.7 | Manage Team Performance | 0.5d | 2018-01-23 13:00 A | 2018-01-23 17:00 A | 43 | 100% |  |  | start no earlier than 2018-01-19 08:00 |
| 45 | 3.5.8 | Project Management & Processes | 0.5d | 2018-01-24 08:00 A | 2018-01-24 12:00 A | 44 | 100% |  |  | start no earlier than 2018-01-19 08:00 |
| 46 | 3.5.9 | Tool Management Control & Accountability | 0.5d | 2018-01-24 13:00 A | 2018-01-24 17:00 A | 45 | 100% |  |  | start no earlier than 2018-01-19 08:00 |
| 47 | 3.5.10 | Quality | 0.5d | 2018-01-25 08:00 A | 2018-01-25 12:00 A | 46 | 100% |  |  |  |
| 48 | 3.5.11 | Run the Business | 0.5d | 2018-01-25 13:00 A | 2018-01-25 17:00 A | 47 | 100% |  |  |  |
| 49 | 3.5.12 | Resources | 0.5d | 2018-01-26 08:00 A | 2018-01-26 12:00 A | 48 | 100% |  |  |  |
| 50 | 3.5.13 | Mobile: Create mobile design | 0.5d | 2018-01-26 13:00 A | 2018-01-26 17:00 A | 49 | 100% |  |  |  |

Notes:
- 35: ·Compliance to Quality / ·Human Resources - added / ·Text Sizing / ·Icons updated
- 36: ·Human Resources to be changed to something else / ·Do we have the correct number of Buttons / Categories?

| ID | WBS | Task | Duration | Start | Finish | Predecessors | Complete | Remaining | Total slack | Free slack | Constraint |
| --- | --- | --- | --- | --- | --- | --- | --- | --- | --- | --- | --- |
| 51 | 3.5.14 | **Upload / Insert Page Content** | 7.25d | 2018-01-18 08:00 A | 2018-01-29 10:00 |  | 31% | 5.02d | 19.75d |  |  |
| 52 | 3.5.14.1 | Boeing Production Systems | 0.25d | 2018-01-19 13:00 A | 2018-01-19 15:00 A | 39 | 100% |  |  |  |  |
| 53 | 3.5.14.2 | Develop Yourself | 0.25d | 2018-01-22 08:00 A | 2018-01-22 10:00 A | 40 | 100% |  |  |  |  |
| 54 | 3.5.14.3 | Develop Your Team | 0.25d | 2018-01-22 13:00 A | 2018-01-22 15:00 A | 41 | 100% |  |  |  |  |
| 55 | 3.5.14.4 | FOD | 0.25d | 2018-01-23 08:00 | 2018-01-23 10:00 | 42 |  |  | 23.75d |  |  |
| 56 | 3.5.14.5 | Go4Zero | 0.25d | 2018-01-23 13:00 | 2018-01-23 15:00 | 43 |  |  | 23.25d |  |  |
| 57 | 3.5.14.6 | Drawings Specs & Procedures | 0.25d | 2018-01-24 08:00 | 2018-01-24 10:00 | 44 |  |  | 22.75d |  |  |
| 58 | 3.5.14.7 | Manage Team Performance | 0.25d | 2018-01-24 13:00 | 2018-01-24 15:00 | 45 |  |  | 22.25d |  |  |
| 59 | 3.5.14.8 | Project Management & Processes | 0.25d | 2018-01-25 08:00 | 2018-01-25 10:00 | 46 |  |  | 21.75d |  |  |
| 60 | 3.5.14.9 | Tool Management Control & Accountability | 0.25d | 2018-01-25 13:00 | 2018-01-25 15:00 | 47 |  |  | 21.25d |  |  |
| 61 | 3.5.14.10 | Quality | 0.25d | 2018-01-26 08:00 | 2018-01-26 10:00 | 48 |  |  | 20.75d |  |  |
| 62 | 3.5.14.11 | Run the Business | 0.25d | 2018-01-26 13:00 | 2018-01-26 15:00 | 49 |  |  | 20.25d |  |  |
| 63 | 3.5.14.12 | Resources | 0.25d | 2018-01-29 08:00 | 2018-01-29 10:00 | 50 |  |  | 19.75d |  |  |
| 64 | 3.5.14.13 | Mobile: Create mobile design | 0.25d | 2018-01-18 08:00 A | 2018-01-18 10:00 A |  | 100% |  |  |  |  |
| 65 | 3.6 | **Pilot / Validation** | 10d | 2018-01-29 08:00 | 2018-02-09 17:00 |  |  |  | 10d |  |  |
| 66 | 3.6.1 | Pilot User-Group Test (A) | 3d | 2018-01-29 08:00 | 2018-01-31 17:00 |  |  |  | 10d | 0d | finish no earlier than 2018-01-31 17:00 |
| 67 | 3.6.2 | Incorporate Feedback | 2d | 2018-02-01 08:00 | 2018-02-02 17:00 | 66 |  |  | 10d | 0d | start no earlier than 2018-01-31 08:00 |
| 68 | 3.6.3 | Pilot User-Group Test (B) | 3d | 2018-02-05 08:00 | 2018-02-07 17:00 | 67 |  |  | 10d | 0d | finish no earlier than 2018-02-07 17:00 |
| 69 | 3.6.4 | Incorporate Feedback | 2d | 2018-02-08 08:00 | 2018-02-09 17:00 | 68 |  |  | 10d |  | finish no earlier than 2018-02-09 17:00 |
| 70 | 4 | **Go-Live** | 2d? | 2018-02-09 08:00 | 2018-02-12 17:00 |  |  |  | 9d |  |  |
| 71 | 4.1 | Upload new FFL site to 'staging' | 1d? | 2018-02-09 08:00 | 2018-02-09 17:00 |  |  |  | 10d |  | start no earlier than 2018-02-09 08:00 |
| 72 | 4.2 | Upload to Live-site / CUT-OVER | 1d? | 2018-02-12 08:00 | 2018-02-12 17:00 | 71 |  |  | 9d |  | start no earlier than 2018-02-09 08:00 |
| 73 | 5 | **Post- Live Website** | 10d? | 2018-02-12 08:00 A | 2018-02-23 17:00 |  | 7% | 9.29d? | 0d |  |  |
| 74 | 5.1 | Create OneNote Maintenance document | 5d | 2018-02-12 08:00 | 2018-02-16 17:00 |  |  |  | 5d |  | finish no earlier than 2018-02-16 17:00 |
| 75 | 5.2 | Create Regulatory audit calendar | 1d | 2018-02-19 08:00 | 2018-02-19 17:00 |  |  |  | 4d |  | start no earlier than 2018-02-19 08:00 |
| 76 | 5.3 | Validate Future web-site administration logistics | 1d | 2018-02-22 08:00 A | 2018-02-22 17:00 A |  | 100% |  |  |  | start no earlier than 2018-01-12 08:00 |
| 77 | 5.4 | Tip Sheet for Editing | 4d? | 2018-02-20 08:00 | 2018-02-23 17:00 |  |  |  | 0d |  | finish no earlier than 2018-02-23 17:00 |

Notes:
- 76: Per Gayann, I will be responsible for website maintenance. I am proposing regulatory audit checks and website feedback though customer useage. 1/12/18

| ID | WBS | Task | Duration | Start | Finish | Total slack | Constraint | Help Needed |
| --- | --- | --- | --- | --- | --- | --- | --- | --- |
| 78 | 5.5 | **Mobile** | 3d | 2018-02-21 08:00 | 2018-02-23 17:00 | 0d |  |  |
| 79 | 5.5.1 | Tip Sheet for accessability through mobile devices | 3d | 2018-02-21 08:00 | 2018-02-23 17:00 | 0d | finish no earlier than 2018-02-23 17:00 | help needed |
